# workspace-task-rev-6-ms-project

Schedule from MS Project, 2026-09-20 to 2027-02-12.

## Calendars

- Standard: Mon-Sat 08:00-12:00, 13:00-17:00; Sun off.

## Resources

| Resource |
| --- |
| Arif |
| Fikri |
| Erkoc |
| Rizal |
| Sulis |
| We |
| Arie |
| Jude |
| Roso |

## Schedule

| ID | WBS | Task | Type | Duration | Start | Finish | Predecessors | Total slack | Free slack | Resources | Work | Text1 |
| --- | --- | --- | --- | --- | --- | --- | --- | --- | --- | --- | --- | --- |
| 1 | 1 | **Admisi Workspace Booking (SC-01-01)** |  | 18d | 2026-09-22 | 2026-10-12 |  | 0d |  | Arif | 288h |  |
| 2 | 1.1 | Booking - Core Feature | manual | 2d | 2026-09-22 | 2026-09-23 |  |  |  | Arif | 16h | SC-01-01-01a |
| 3 | 1.2 | PasienTracker - Core Feature |  | 2d | 2026-09-24 | 2026-09-25 | 2 | 106d | 0d | Arif | 16h | SC-01-01-01b |
| 4 | 1.3 | JadwalPraktek - Core Feature |  | 2d | 2026-09-26 | 2026-09-28 | 3 | 106d | 0d | Arif | 16h | SC-01-01-01c |
| 5 | 1.4 | Antrian - Core Feature |  | 2d | 2026-09-29 | 2026-09-30 | 4 | 106d | 0d | Arif | 16h | SC-01-01-01d |
| 6 | 1.5 | Booking - UI Design |  | 2d | 2026-10-01 | 2026-10-02 | 5 | 106d | 0d | Arif | 16h | SC-01-01-02 |
| 7 | 1.6 | Booking - BFF Feature |  | 1d | 2026-10-03 | 2026-10-03 | 6 | 106d | 0d | Arif | 8h | SC-01-01-03 |
| 8 | 1.7 | Booking - Architecture |  | 1d | 2026-10-05 | 2026-10-05 | 7 | 106d | 0d | Arif | 8h | SC-01-01-04 |
| 9 | 1.8 | Booking - Development |  | 1d | 2026-10-06 | 2026-10-06 | 8 | 106d | 0d | Arif | 8h | SC-01-01-05 |
| 10 | 1.9 | Booking - Testing |  | 3d | 2026-10-07 | 2026-10-09 | 9 | 106d | 0d | Arif | 24h | SC-01-01-06 |
| 11 | 1.10 | Booking - Deployment |  | 2d | 2026-10-10 | 2026-10-12 | 10 | 106d |  | Arif | 16h | SC-01-01-07 |
| 12 | 2 | **Admisi Workspace Reg Rajal-IGD (SC-01-02)** |  | 18d | 2026-09-20 | 2026-10-10 |  | 0d |  | Arif | 296h |  |
| 13 | 2.1 | Registrasi - Core Feature | manual | 3d | 2026-09-20 | 2026-09-22 |  |  |  | Arif | 24h | SC-01-02-01a |
| 14 | 2.2 | VclaimBpjs - Core Feature |  | 2d | 2026-09-23 | 2026-09-24 | 13 | 36d | 0d | Arif | 16h | SC-01-02-01b |
| 15 | 2.3 | PasienTracker - Core Feature |  | 1d | 2026-09-25 | 2026-09-25 | 14 | 36d | 0d | Arif | 8h | SC-01-02-01c |
| 16 | 2.4 | JadwalPraktek - Core Feature |  | 1d | 2026-09-26 | 2026-09-26 | 15 | 36d | 0d | Arif | 8h | SC-01-02-01d |
| 17 | 2.5 | Antrian - Core Feature |  | 1d | 2026-09-28 | 2026-09-28 | 16 | 36d | 0d | Arif | 8h | SC-01-02-01e |
| 18 | 2.6 | Reg Rajal-IGD - UI Design |  | 3d | 2026-09-29 | 2026-10-01 | 17 | 36d | 0d | Arif | 24h | SC-01-02-02 |
| 19 | 2.7 | Reg Rajal-IGD - BFF Feature |  | 2d | 2026-10-02 | 2026-10-03 | 18 | 36d | 0d | Arif | 16h | SC-01-02-03 |
| 20 | 2.8 | Reg Rajal-IGD - Architecture |  | 1d | 2026-10-05 | 2026-10-05 | 19 | 36d | 0d | Arif | 8h | SC-01-02-04 |
| 21 | 2.9 | Reg Rajal-IGD - Development |  | 1d | 2026-10-06 | 2026-10-06 | 20 | 36d | 0d | Arif | 8h | SC-01-02-05 |
| 22 | 2.10 | Reg Rajal-IGD - Testing |  | 2d | 2026-10-07 | 2026-10-08 | 21 | 36d | 0d | Arif | 16h | SC-01-02-06 |
| 23 | 2.11 | Reg Rajal-IGD - Deployment |  | 2d | 2026-10-09 | 2026-10-10 | 22 | 36d | 0d | Arif | 16h | SC-01-02-07 |
| 24 | 3 | **Admisi Workspace Reg Ranap (SC-01-03)** |  | 21d | 2026-10-12 | 2026-11-04 |  | 37d |  | Arif | 336h |  |
| 25 | 3.1 | Registrasi - Core Feature |  | 2d | 2026-10-12 | 2026-10-13 | 23 | 36d | 0d | Arif | 16h | SC-01-03-01a |
| 26 | 3.2 | VclaimBpjs - Core Feature |  | 1d | 2026-10-14 | 2026-10-14 | 25 | 36d | 0d | Arif | 8h | SC-01-03-01b |
| 27 | 3.3 | PasienTracker - Core Feature |  | 1d | 2026-10-15 | 2026-10-15 | 26 | 36d | 0d | Arif | 8h | SC-01-03-01c |
| 28 | 3.4 | WaitingList - Core Feature |  | 2d | 2026-10-16 | 2026-10-17 | 27 | 36d | 0d | Arif | 16h | SC-01-03-01d |
| 29 | 3.5 | Reg Ranap - UI Design |  | 3d | 2026-10-19 | 2026-10-21 | 28 | 37d | 0d | Arif | 24h | SC-01-03-02 |
| 30 | 3.6 | Reg Ranap - BFF Feature |  | 2d | 2026-10-22 | 2026-10-23 | 29 | 37d | 0d | Arif | 16h | SC-01-03-03 |
| 31 | 3.7 | Reg Ranap - Architecture |  | 1d | 2026-10-24 | 2026-10-24 | 30 | 37d | 0d | Arif | 8h | SC-01-03-04 |
| 32 | 3.8 | Reg Ranap - Development |  | 1d | 2026-10-26 | 2026-10-26 | 31 | 37d | 0d | Arif | 8h | SC-01-03-05 |
| 33 | 3.9 | Reg Ranap - Testing |  | 4d | 2026-10-27 | 2026-10-30 | 32 | 37d | 0d | Arif | 32h | SC-01-03-06 |
| 34 | 3.10 | Reg Ranap - Deployment |  | 4d | 2026-10-31 | 2026-11-04 | 33 | 37d | 0d | Arif | 32h | SC-01-03-07 |

| ID | WBS | Task | Type | Duration | Start | Finish | Predecessors | Total slack | Free slack | Constraint | Resources | Work | Text1 |
| --- | --- | --- | --- | --- | --- | --- | --- | --- | --- | --- | --- | --- | --- |
| 35 | 4 | **Poli Rawat Jalan Workspace Tindakan (SC-05-01)** |  | 24d | 2026-10-12 | 2026-11-07 |  | 0d |  |  | Fikri | 384h |  |
| 36 | 4.1 | Tindakan - Core Feature | manual | 4d | 2026-10-12 | 2026-10-15 |  |  |  |  | Fikri | 32h | SC-05-01-01a |
| 37 | 4.2 | Billing - Core Feature |  | 3d | 2026-10-16 | 2026-10-19 | 36 | 8d | 0d |  | Fikri | 24h | SC-05-01-01b |
| 38 | 4.3 | PakaiBrg - Core Feature |  | 3d | 2026-10-20 | 2026-10-22 | 37 | 8d | 0d |  | Fikri | 24h | SC-05-01-01c |
| 39 | 4.4 | Tindakan Rajal - UI Design |  | 2d | 2026-10-23 | 2026-10-24 | 38 | 8d | 0d |  | Fikri | 16h | SC-05-01-02 |
| 40 | 4.5 | Tindakan Rajal - BFF Feature |  | 2d | 2026-10-26 | 2026-10-27 | 39 | 8d | 0d |  | Fikri | 16h | SC-05-01-03 |
| 41 | 4.6 | Tindakan Rajal - Architecture |  | 1d | 2026-10-28 | 2026-10-28 | 40 | 8d | 0d |  | Fikri | 8h | SC-05-01-04 |
| 42 | 4.7 | Tindakan Rajal - Development |  | 1d | 2026-10-29 | 2026-10-29 | 41 | 8d | 0d |  | Fikri | 8h | SC-05-01-05 |
| 43 | 4.8 | Tindakan Rajal - Testing |  | 4d | 2026-10-30 | 2026-11-03 | 42 | 8d | 0d |  | Fikri | 32h | SC-05-01-06 |
| 44 | 4.9 | Tindakan Rajal - Deployment |  | 4d | 2026-11-04 | 2026-11-07 | 43 | 8d | 0d |  | Fikri | 32h | SC-05-01-07 |
| 45 | 5 | **Poli Rawat Jalan Workspace Local Inventory (SC-05-02)** |  | 21d | 2026-11-09 | 2026-12-02 |  | 8d |  |  | Fikri | 336h |  |
| 46 | 5.1 | StokOpname - Core Feature |  | 3d | 2026-11-09 | 2026-11-11 | 44 | 8d | 0d |  | Fikri | 24h | SC-05-02-01a |
| 47 | 5.2 | ReqMutasi - Core Feature |  | 2d | 2026-11-12 | 2026-11-13 | 46 | 8d | 0d |  | Fikri | 16h | SC-05-02-01b |
| 48 | 5.3 | TerimaMutasi - Core Feature |  | 2d | 2026-11-14 | 2026-11-16 | 47 | 8d | 0d |  | Fikri | 16h | SC-05-02-01c |
| 49 | 5.4 | Inventory Rajal - UI Design |  | 3d | 2026-11-17 | 2026-11-19 | 48 | 8d | 0d |  | Fikri | 24h | SC-05-02-02 |
| 50 | 5.5 | Inventory Rajal - BFF Feature |  | 1d | 2026-11-20 | 2026-11-20 | 49 | 8d | 0d |  | Fikri | 8h | SC-05-02-03 |
| 51 | 5.6 | Inventory Rajal - Architecture |  | 1d | 2026-11-21 | 2026-11-21 | 50 | 8d | 0d |  | Fikri | 8h | SC-05-02-04 |
| 52 | 5.7 | Inventory Rajal - Development |  | 1d | 2026-11-23 | 2026-11-23 | 51 | 8d | 0d |  | Fikri | 8h | SC-05-02-05 |
| 53 | 5.8 | Inventory Rajal - Testing |  | 4d | 2026-11-24 | 2026-11-27 | 52 | 8d | 0d |  | Fikri | 32h | SC-05-02-06 |
| 54 | 5.9 | Inventory Rajal - Deployment |  | 4d | 2026-11-28 | 2026-12-02 | 53 | 8d | 0d |  | Fikri | 32h | SC-05-02-07 |
| 55 | 6 | **Tata Rekening Workspace Reg Out (SC-02-01)** |  | 22d | 2026-10-12 | 2026-11-05 |  | 0d |  |  | Erkoc | 352h |  |
| 56 | 6.1 | Billing - Core Feature | manual | 4d | 2026-10-12 | 2026-10-15 |  |  |  | start no earlier than 2026-10-12 | Erkoc | 32h | SC-02-01-01a |
| 57 | 6.2 | OrderPayment - Core Feature |  | 4d | 2026-10-16 | 2026-10-20 | 56 | 32d | 0d |  | Erkoc | 32h | SC-02-01-01b |
| 58 | 6.3 | Reg Out - UI Design |  | 3d | 2026-10-21 | 2026-10-23 | 57 | 8d | 0d |  | Erkoc | 24h | SC-02-01-02 |
| 59 | 6.4 | Reg Out - BFF Feature |  | 1d | 2026-10-24 | 2026-10-24 | 58 | 8d | 0d |  | Erkoc | 8h | SC-02-01-03 |
| 60 | 6.5 | Reg Out - Architecture |  | 1d | 2026-10-26 | 2026-10-26 | 59 | 8d | 0d |  | Erkoc | 8h | SC-02-01-04 |
| 61 | 6.6 | Reg Out - Development |  | 1d | 2026-10-27 | 2026-10-27 | 60 | 8d | 0d |  | Erkoc | 8h | SC-02-01-05 |
| 62 | 6.7 | Reg Out - Testing |  | 4d | 2026-10-28 | 2026-10-31 | 61 | 8d | 0d |  | Erkoc | 32h | SC-02-01-06 |
| 63 | 6.8 | Reg Out - Deployment |  | 4d | 2026-11-02 | 2026-11-05 | 62 | 8d | 0d |  | Erkoc | 32h | SC-02-01-07 |

| ID | WBS | Task | Type | Duration | Start | Finish | Predecessors | Total slack | Free slack | Resources | Work | Text1 |
| --- | --- | --- | --- | --- | --- | --- | --- | --- | --- | --- | --- | --- |
| 64 | 7 | **Kasir Workspace Kasir (SC-03-01)** |  | 18d | 2026-11-06 | 2026-11-26 |  | 8d |  | Erkoc | 288h |  |
| 65 | 7.1 | Kasir - Core Feature |  | 4d | 2026-11-06 | 2026-11-10 | 63 | 8d | 0d | Erkoc | 32h | SC-03-01-01a |
| 66 | 7.2 | Kasir - UI Design |  | 3d | 2026-11-11 | 2026-11-13 | 65 | 8d | 0d | Erkoc | 24h | SC-03-01-02 |
| 67 | 7.3 | Kasir - BFF Feature |  | 1d | 2026-11-14 | 2026-11-14 | 66 | 8d | 0d | Erkoc | 8h | SC-03-01-03 |
| 68 | 7.4 | Kasir - Architecture |  | 1d | 2026-11-16 | 2026-11-16 | 67 | 8d | 0d | Erkoc | 8h | SC-03-01-04 |
| 69 | 7.5 | Kasir - Development |  | 1d | 2026-11-17 | 2026-11-17 | 68 | 8d | 0d | Erkoc | 8h | SC-03-01-05 |
| 70 | 7.6 | Kasir - Testing |  | 4d | 2026-11-18 | 2026-11-21 | 69 | 8d | 0d | Erkoc | 32h | SC-03-01-06 |
| 71 | 7.7 | Kasir - Deployment |  | 4d | 2026-11-23 | 2026-11-26 | 70 | 8d | 0d | Erkoc | 32h | SC-03-01-07 |
| 72 | 8 | **Kasir Workspace Closing Shift (SC-03-02)** |  | 16d | 2026-11-27 | 2026-12-15 |  | 8d |  | Erkoc | 256h |  |
| 73 | 8.1 | ClosingShift - Core Feature |  | 4d | 2026-11-27 | 2026-12-01 | 71 | 8d | 0d | Erkoc | 32h | SC-03-02-01a |
| 74 | 8.2 | Closing Shift - UI Design |  | 3d | 2026-12-02 | 2026-12-04 | 73 | 8d | 0d | Erkoc | 24h | SC-03-02-02 |
| 75 | 8.3 | Closing Shift - BFF Feature |  | 1d | 2026-12-05 | 2026-12-05 | 74 | 8d | 0d | Erkoc | 8h | SC-03-02-03 |
| 76 | 8.4 | Closing Shift - Architecture |  | 1d | 2026-12-07 | 2026-12-07 | 75 | 8d | 0d | Erkoc | 8h | SC-03-02-04 |
| 77 | 8.5 | Closing Shift - Development |  | 1d | 2026-12-08 | 2026-12-08 | 76 | 8d | 0d | Erkoc | 8h | SC-03-02-05 |
| 78 | 8.6 | Closing Shift - Testing |  | 3d | 2026-12-09 | 2026-12-11 | 77 | 8d | 0d | Erkoc | 24h | SC-03-02-06 |
| 79 | 8.7 | Closing Shift - Deployment |  | 3d | 2026-12-12 | 2026-12-15 | 78 | 8d | 0d | Erkoc | 24h | SC-03-02-07 |
| 80 | 9 | **Rekam Medis Workspace Berkas RM (SC-04-01)** |  | 22d | 2026-10-12 | 2026-11-05 |  | 0d |  | Rizal | 352h |  |
| 81 | 9.1 | DataSosialPasien - Core Feature | manual | 4d | 2026-10-12 | 2026-10-15 |  |  |  | Rizal | 32h | SC-04-01-01a |
| 82 | 9.2 | MutasiBerkas - Core Feature |  | 4d | 2026-10-16 | 2026-10-20 | 81 | 39d | 0d | Rizal | 32h | SC-04-01-01b |
| 83 | 9.3 | Berkas RM - UI Design |  | 3d | 2026-10-21 | 2026-10-23 | 82 | 39d | 0d | Rizal | 24h | SC-04-01-02 |
| 84 | 9.4 | Berkas RM - BFF Feature |  | 1d | 2026-10-24 | 2026-10-24 | 83 | 39d | 0d | Rizal | 8h | SC-04-01-03 |
| 85 | 9.5 | Berkas RM - Architecture |  | 1d | 2026-10-26 | 2026-10-26 | 84 | 39d | 0d | Rizal | 8h | SC-04-01-04 |
| 86 | 9.6 | Berkas RM - Development |  | 1d | 2026-10-27 | 2026-10-27 | 85 | 39d | 0d | Rizal | 8h | SC-04-01-05 |
| 87 | 9.7 | Berkas RM - Testing |  | 4d | 2026-10-28 | 2026-10-31 | 86 | 39d | 0d | Rizal | 32h | SC-04-01-06 |
| 88 | 9.8 | Berkas RM - Deployment |  | 4d | 2026-11-02 | 2026-11-05 | 87 | 39d | 0d | Rizal | 32h | SC-04-01-07 |

| ID | WBS | Task | Duration | Start | Finish | Predecessors | Total slack | Free slack | Resources | Work | Text1 |
| --- | --- | --- | --- | --- | --- | --- | --- | --- | --- | --- | --- |
| 89 | 10 | **Rekam Medis Workspace Casemix dan Coding (SC-04-02)** | 23d | 2026-11-06 | 2026-12-02 |  | 41d |  | Rizal | 368h |  |
| 90 | 10.1 | MorbiditasPasien - Core Feature | 4d | 2026-11-06 | 2026-11-10 | 88 | 39d | 0d | Rizal | 32h | SC-04-02-01a |
| 91 | 10.2 | Eklaim - Core Feature | 4d | 2026-11-11 | 2026-11-14 | 90 | 39d | 0d | Rizal | 32h | SC-04-02-01b |
| 92 | 10.3 | Casemix - UI Design | 4d | 2026-11-16 | 2026-11-19 | 91 | 41d | 0d | Rizal | 32h | SC-04-02-02 |
| 93 | 10.4 | Casemix - BFF Feature | 1d | 2026-11-20 | 2026-11-20 | 92 | 41d | 0d | Rizal | 8h | SC-04-02-03 |
| 94 | 10.5 | Casemix - Architecture | 1d | 2026-11-21 | 2026-11-21 | 93 | 41d | 0d | Rizal | 8h | SC-04-02-04 |
| 95 | 10.6 | Casemix - Development | 1d | 2026-11-23 | 2026-11-23 | 94 | 41d | 0d | Rizal | 8h | SC-04-02-05 |
| 96 | 10.7 | Casemix - Testing | 4d | 2026-11-24 | 2026-11-27 | 95 | 41d | 0d | Rizal | 32h | SC-04-02-06 |
| 97 | 10.8 | Casemix - Deployment | 4d | 2026-11-28 | 2026-12-02 | 96 | 41d | 0d | Rizal | 32h | SC-04-02-07 |
| 98 | 11 | **Rekam Medis Workspace Pelaporan RL (SC-04-03)** | 21d | 2026-12-03 | 2026-12-26 |  | 41d |  | Rizal | 336h |  |
| 99 | 11.1 | PelaporanRL - Core Feature | 5d | 2026-12-03 | 2026-12-08 | 97 | 41d | 0d | Rizal | 40h | SC-04-03-01a |
| 100 | 11.2 | Pelaporan RL - UI Design | 5d | 2026-12-09 | 2026-12-14 | 99 | 41d | 0d | Rizal | 40h | SC-04-03-02 |
| 101 | 11.3 | Pelaporan RL - BFF Feature | 1d | 2026-12-15 | 2026-12-15 | 100 | 41d | 0d | Rizal | 8h | SC-04-03-03 |
| 102 | 11.4 | Pelaporan RL - Architecture | 1d | 2026-12-16 | 2026-12-16 | 101 | 41d | 0d | Rizal | 8h | SC-04-03-04 |
| 103 | 11.5 | Pelaporan RL - Development | 1d | 2026-12-17 | 2026-12-17 | 102 | 41d | 0d | Rizal | 8h | SC-04-03-05 |
| 104 | 11.6 | Pelaporan RL - Testing | 4d | 2026-12-18 | 2026-12-22 | 103 | 41d | 0d | Rizal | 32h | SC-04-03-06 |
| 105 | 11.7 | Pelaporan RL - Deployment | 4d | 2026-12-23 | 2026-12-26 | 104 | 41d |  | Rizal | 32h | SC-04-03-07 |
| 106 | 12 | **IGD Workspace IGD Triage (SC-07-01)** | 29d | 2026-11-05 | 2026-12-08 |  | 37d |  | Arif | 464h |  |
| 107 | 12.1 | IgdVisit - Core Feature | 2d | 2026-11-05 | 2026-11-06 | 34 | 37d | 0d | Arif | 16h | SC-07-01-01a |
| 108 | 12.2 | IgdTriage - Core Feature | 2d | 2026-11-07 | 2026-11-09 | 107 | 37d | 0d | Arif | 16h | SC-07-01-01b |
| 109 | 12.3 | Tindakan - Core Feature | 2d | 2026-11-10 | 2026-11-11 | 108 | 37d | 0d | Arif | 16h | SC-07-01-01c |
| 110 | 12.4 | PakaiBrg - Core Feature | 3d | 2026-11-12 | 2026-11-14 | 109 | 37d | 0d | Arif | 24h | SC-07-01-01d |
| 111 | 12.5 | Billing - Core Feature | 3d | 2026-11-16 | 2026-11-18 | 110 | 37d | 0d | Arif | 24h | SC-07-01-01e |
| 112 | 12.6 | Ambulance - Core Feature | 3d | 2026-11-19 | 2026-11-21 | 111 | 37d | 0d | Arif | 24h | SC-07-01-01f |
| 113 | 12.7 | IGD Triage - UI Design | 3d | 2026-11-23 | 2026-11-25 | 112 | 37d | 0d | Arif | 24h | SC-07-01-02 |
| 114 | 12.8 | IGD Triage - BFF Feature | 1d | 2026-11-26 | 2026-11-26 | 113 | 37d | 0d | Arif | 8h | SC-07-01-03 |
| 115 | 12.9 | IGD Triage - Architecture | 1d | 2026-11-27 | 2026-11-27 | 114 | 37d | 0d | Arif | 8h | SC-07-01-04 |
| 116 | 12.10 | IGD Triage - Development | 1d | 2026-11-28 | 2026-11-28 | 115 | 37d | 0d | Arif | 8h | SC-07-01-05 |
| 117 | 12.11 | IGD Triage - Testing | 4d | 2026-11-30 | 2026-12-03 | 116 | 37d | 0d | Arif | 32h | SC-07-01-06 |
| 118 | 12.12 | IGD Triage - Deployment | 4d | 2026-12-04 | 2026-12-08 | 117 | 37d | 29d | Arif | 32h | SC-07-01-07 |

| ID | WBS | Task | Type | Duration | Start | Finish | Predecessors | Total slack | Free slack | Resources | Work | Text1 |
| --- | --- | --- | --- | --- | --- | --- | --- | --- | --- | --- | --- | --- |
| 119 | 13 | **IGD Workspace Local Inventory (SC-05-02)** |  | 20d | 2027-01-12 | 2027-02-03 |  | 8d |  | Arif | 320h |  |
| 120 | 13.1 | StokOpname - Core Feature |  | 2d | 2027-01-12 | 2027-01-13 | 118, 179 | 8d | 0d | Arif | 16h | SC-05-02-01a |
| 121 | 13.2 | ReqMutasi - Core Feature |  | 2d | 2027-01-14 | 2027-01-15 | 120 | 8d | 0d | Arif | 16h | SC-05-02-01b |
| 122 | 13.3 | TerimaMutasi - Core Feature |  | 2d | 2027-01-16 | 2027-01-18 | 121 | 8d | 0d | Arif | 16h | SC-05-02-01c |
| 123 | 13.4 | Inventory IGD - UI Design |  | 3d | 2027-01-19 | 2027-01-21 | 122 | 8d | 0d | Arif | 24h | SC-05-02-02 |
| 124 | 13.5 | Inventory IGD - BFF Feature |  | 1d | 2027-01-22 | 2027-01-22 | 123 | 8d | 0d | Arif | 8h | SC-05-02-03 |
| 125 | 13.6 | Inventory IGD - Architecture |  | 1d | 2027-01-23 | 2027-01-23 | 124 | 8d | 0d | Arif | 8h | SC-05-02-04 |
| 126 | 13.7 | Inventory IGD - Development |  | 1d | 2027-01-25 | 2027-01-25 | 125 | 8d | 0d | Arif | 8h | SC-05-02-05 |
| 127 | 13.8 | Inventory IGD - Testing |  | 4d | 2027-01-26 | 2027-01-29 | 126 | 8d | 0d | Arif | 32h | SC-05-02-06 |
| 128 | 13.9 | Inventory IGD - Deployment |  | 4d | 2027-01-30 | 2027-02-03 | 127 | 8d |  | Arif | 32h | SC-05-02-07 |
| 129 | 14 | **Bangsal Rawat Inap Workspace Bed Management (SC-06-01)** |  | 31d | 2026-10-12 | 2026-11-16 |  | 0d |  | Sulis | 496h |  |
| 130 | 14.1 | PakaiBed - Core Feature | manual | 5d | 2026-10-12 | 2026-10-16 |  |  |  | Sulis | 40h | SC-06-01-01a |
| 131 | 14.2 | WaitingList - Core Feature |  | 4d | 2026-10-17 | 2026-10-21 | 130 | 56d | 0d | Sulis | 32h | SC-06-01-01b |
| 132 | 14.3 | RoomCharge - Core Feature |  | 5d | 2026-10-22 | 2026-10-27 | 131 | 56d | 0d | Sulis | 40h | SC-06-01-01c |
| 133 | 14.4 | Tindakan - Core Feature |  | 1d | 2026-10-28 | 2026-10-28 | 132 | 56d | 0d | Sulis | 8h | SC-06-01-01d |
| 134 | 14.5 | Billing - Core Feature |  | 1d | 2026-10-29 | 2026-10-29 | 133 | 56d | 0d | Sulis | 8h | SC-06-01-01e |
| 135 | 14.6 | PakaiBrg - Core Feature |  | 1d | 2026-10-30 | 2026-10-30 | 134 | 56d | 0d | Sulis | 8h | SC-06-01-01f |
| 136 | 14.7 | Bangsal - UI Design |  | 3d | 2026-10-31 | 2026-11-03 | 135 | 56d | 0d | Sulis | 24h | SC-06-01-02 |
| 137 | 14.8 | Bangsal - BFF Feature |  | 1d | 2026-11-04 | 2026-11-04 | 136 | 56d | 0d | Sulis | 8h | SC-06-01-03 |
| 138 | 14.9 | Bangsal - Architecture |  | 1d | 2026-11-05 | 2026-11-05 | 137 | 56d | 0d | Sulis | 8h | SC-06-01-04 |
| 139 | 14.10 | Bangsal - Development |  | 1d | 2026-11-06 | 2026-11-06 | 138 | 56d | 0d | Sulis | 8h | SC-06-01-05 |
| 140 | 14.11 | Bangsal - Testing |  | 4d | 2026-11-07 | 2026-11-11 | 139 | 56d | 0d | Sulis | 32h | SC-06-01-06 |
| 141 | 14.12 | Bangsal - Deployment |  | 4d | 2026-11-12 | 2026-11-16 | 140 | 56d | 48d | Sulis | 32h | SC-06-01-07 |
| 142 | 15 | **Bangsal Rawat Inap Workspace Local Inventory (SC-05-02)** |  | 20d | 2027-01-12 | 2027-02-03 |  | 8d |  | Sulis | 320h |  |
| 143 | 15.1 | StokOpname - Core Feature |  | 2d | 2027-01-12 | 2027-01-13 | 141, 179 | 8d | 0d | Sulis | 16h | SC-05-02-01a |
| 144 | 15.2 | ReqMutasi - Core Feature |  | 2d | 2027-01-14 | 2027-01-15 | 143 | 8d | 0d | Sulis | 16h | SC-05-02-01b |
| 145 | 15.3 | TerimaMutasi - Core Feature |  | 2d | 2027-01-16 | 2027-01-18 | 144 | 8d | 0d | Sulis | 16h | SC-05-02-01c |
| 146 | 15.4 | Inventory Bangsal - UI Design |  | 3d | 2027-01-19 | 2027-01-21 | 145 | 8d | 0d | Sulis | 24h | SC-05-02-02 |
| 147 | 15.5 | Inventory Bangsal - BFF Feature |  | 1d | 2027-01-22 | 2027-01-22 | 146 | 8d | 0d | Sulis | 8h | SC-05-02-03 |
| 148 | 15.6 | Inventory Bangsal - Architecture |  | 1d | 2027-01-23 | 2027-01-23 | 147 | 8d | 0d | Sulis | 8h | SC-05-02-04 |
| 149 | 15.7 | Inventory Bangsal - Development |  | 1d | 2027-01-25 | 2027-01-25 | 148 | 8d | 0d | Sulis | 8h | SC-05-02-05 |
| 150 | 15.8 | Inventory Bangsal - Testing |  | 4d | 2027-01-26 | 2027-01-29 | 149 | 8d | 0d | Sulis | 32h | SC-05-02-06 |
| 151 | 15.9 | Inventory Bangsal - Deployment |  | 4d | 2027-01-30 | 2027-02-03 | 150 | 8d |  | Sulis | 32h | SC-05-02-07 |

| ID | WBS | Task | Type | Duration | Start | Finish | Predecessors | Total slack | Free slack | Resources | Work | Text1 |
| --- | --- | --- | --- | --- | --- | --- | --- | --- | --- | --- | --- | --- |
| 152 | 16 | **Laboratorium Workspace Order Laboratorium (SC-08-01)** |  | 27d | 2026-10-12 | 2026-11-11 |  | 0d |  | We | 432h |  |
| 153 | 16.1 | RegExternal - Core Feature | manual | 3d | 2026-10-12 | 2026-10-14 |  |  |  | We | 24h | SC-08-01-01a |
| 154 | 16.2 | OrderLab - Core Feature |  | 4d | 2026-10-15 | 2026-10-19 | 153 | 0d |  | We | 32h | SC-08-01-01b |
| 155 | 16.3 | SampleCollection - Core Feature |  | 4d | 2026-10-20 | 2026-10-23 | 154 | 0d |  | We | 32h | SC-08-01-01c |
| 156 | 16.4 | Billing - Core Feature |  | 2d | 2026-10-24 | 2026-10-26 | 155 | 0d |  | We | 16h | SC-08-01-01d |
| 157 | 16.5 | Order Lab - UI Design |  | 3d | 2026-10-27 | 2026-10-29 | 156 | 0d |  | We | 24h | SC-08-01-02 |
| 158 | 16.6 | Order Lab - BFF Feature |  | 1d | 2026-10-30 | 2026-10-30 | 157 | 0d |  | We | 8h | SC-08-01-03 |
| 159 | 16.7 | Order Lab - Architecture |  | 1d | 2026-10-31 | 2026-10-31 | 158 | 0d |  | We | 8h | SC-08-01-04 |
| 160 | 16.8 | Order Lab - Development |  | 1d | 2026-11-02 | 2026-11-02 | 159 | 0d |  | We | 8h | SC-08-01-05 |
| 161 | 16.9 | Order Lab - Testing |  | 4d | 2026-11-03 | 2026-11-06 | 160 | 0d |  | We | 32h | SC-08-01-06 |
| 162 | 16.10 | Order Lab - Deployment |  | 4d | 2026-11-07 | 2026-11-11 | 161 | 0d |  | We | 32h | SC-08-01-07 |
| 163 | 17 | **Laboratorium Workspace Result Management (SC-08-02)** |  | 18d | 2026-11-12 | 2026-12-02 |  | 0d |  | We | 288h |  |
| 164 | 17.1 | HasilLab - Core Feature |  | 4d | 2026-11-12 | 2026-11-16 | 162 | 0d |  | We | 32h | SC-08-02-01a |
| 165 | 17.2 | Lab Result - UI Design |  | 3d | 2026-11-17 | 2026-11-19 | 164 | 0d |  | We | 24h | SC-08-02-02 |
| 166 | 17.3 | Lab Result - BFF Feature |  | 1d | 2026-11-20 | 2026-11-20 | 165 | 0d |  | We | 8h | SC-08-02-03 |
| 167 | 17.4 | Lab Result - Architecture |  | 1d | 2026-11-21 | 2026-11-21 | 166 | 0d |  | We | 8h | SC-08-02-04 |
| 168 | 17.5 | Lab Result - Development |  | 1d | 2026-11-23 | 2026-11-23 | 167 | 0d |  | We | 8h | SC-08-02-05 |
| 169 | 17.6 | Lab Result - Testing |  | 4d | 2026-11-24 | 2026-11-27 | 168 | 0d |  | We | 32h | SC-08-02-06 |
| 170 | 17.7 | Lab Result - Deployment |  | 4d | 2026-11-28 | 2026-12-02 | 169 | 0d |  | We | 32h | SC-08-02-07 |
| 171 | 18 | **Laboratorium Workspace Local Inventory (SC-08-03)** |  | 27d | 2026-12-16 | 2027-01-15 |  | 8d |  | Erkoc | 432h |  |
| 172 | 18.1 | StokOpname - Core Feature |  | 4d | 2026-12-16 | 2026-12-19 | 79 | 8d | 0d | Erkoc | 32h | SC-08-03-01a |
| 173 | 18.2 | ReqMutasi - Core Feature |  | 4d | 2026-12-21 | 2026-12-24 | 172 | 8d | 0d | Erkoc | 32h | SC-08-03-01b |
| 174 | 18.3 | TerimaMutasi - Core Feature |  | 4d | 2026-12-25 | 2026-12-29 | 173 | 8d | 0d | Erkoc | 32h | SC-08-03-01c |
| 175 | 18.4 | Inventory Lab - UI Design |  | 4d | 2026-12-30 | 2027-01-02 | 174 | 8d | 0d | Erkoc | 32h | SC-08-03-02 |
| 176 | 18.5 | Inventory Lab - BFF Feature |  | 1d | 2027-01-04 | 2027-01-04 | 175 | 8d | 0d | Erkoc | 8h | SC-08-03-03 |
| 177 | 18.6 | Inventory Lab - Architecture |  | 1d | 2027-01-05 | 2027-01-05 | 176 | 8d | 0d | Erkoc | 8h | SC-08-03-04 |
| 178 | 18.7 | Inventory Lab - Development |  | 1d | 2027-01-06 | 2027-01-06 | 177 | 8d | 0d | Erkoc | 8h | SC-08-03-05 |
| 179 | 18.8 | Inventory Lab - Testing |  | 4d | 2027-01-07 | 2027-01-11 | 178 | 8d | 0d | Erkoc | 32h | SC-08-03-06 |
| 180 | 18.9 | Inventory Lab - Deployment |  | 4d | 2027-01-12 | 2027-01-15 | 179 | 24d |  | Erkoc | 32h | SC-08-03-07 |

| ID | WBS | Task | Duration | Start | Finish | Predecessors | Total slack | Resources | Work | Text1 |
| --- | --- | --- | --- | --- | --- | --- | --- | --- | --- | --- |
| 181 | 19 | **Radiologi Workspace Order Radiologi (SC-09-01)** | 26d | 2026-12-03 | 2027-01-01 |  | 0d | We | 416h |  |
| 182 | 19.1 | OrderRadiologi - Core Feature | 4d | 2026-12-03 | 2026-12-07 | 170 | 0d | We | 32h | SC-09-01-01a |
| 183 | 19.2 | JadwalRadiologi - Core Feature | 4d | 2026-12-08 | 2026-12-11 | 182 | 0d | We | 32h | SC-09-01-01b |
| 184 | 19.3 | Billing - Core Feature | 2d | 2026-12-12 | 2026-12-14 | 183 | 0d | We | 16h | SC-09-01-01c |
| 185 | 19.4 | PakaiBrg - Core Feature | 2d | 2026-12-15 | 2026-12-16 | 184 | 0d | We | 16h | SC-09-01-01d |
| 186 | 19.5 | Order Rad - UI Design | 3d | 2026-12-17 | 2026-12-19 | 185 | 0d | We | 24h | SC-09-01-02 |
| 187 | 19.6 | Order Rad - BFF Feature | 1d | 2026-12-21 | 2026-12-21 | 186 | 0d | We | 8h | SC-09-01-03 |
| 188 | 19.7 | Order Rad - Architecture | 1d | 2026-12-22 | 2026-12-22 | 187 | 0d | We | 8h | SC-09-01-04 |
| 189 | 19.8 | Order Rad - Development | 1d | 2026-12-23 | 2026-12-23 | 188 | 0d | We | 8h | SC-09-01-05 |
| 190 | 19.9 | Order Rad - Testing | 4d | 2026-12-24 | 2026-12-28 | 189 | 0d | We | 32h | SC-09-01-06 |
| 191 | 19.10 | Order Rad - Deployment | 4d | 2026-12-29 | 2027-01-01 | 190 | 0d | We | 32h | SC-09-01-07 |
| 192 | 20 | **Radiologi Workspace Expertise (SC-09-02)** | 17d | 2027-01-02 | 2027-01-21 |  | 0d | We | 272h |  |
| 193 | 20.1 | Expertise - Core Feature | 3d | 2027-01-02 | 2027-01-05 | 191 | 0d | We | 24h | SC-09-02-01a |
| 194 | 20.2 | Expertise - UI Design | 3d | 2027-01-06 | 2027-01-08 | 193 | 0d | We | 24h | SC-09-02-02 |
| 195 | 20.3 | Expertise - BFF Feature | 1d | 2027-01-09 | 2027-01-09 | 194 | 0d | We | 8h | SC-09-02-03 |
| 196 | 20.4 | Expertise - Architecture | 1d | 2027-01-11 | 2027-01-11 | 195 | 0d | We | 8h | SC-09-02-04 |
| 197 | 20.5 | Expertise - Development | 1d | 2027-01-12 | 2027-01-12 | 196 | 0d | We | 8h | SC-09-02-05 |
| 198 | 20.6 | Expertise - Testing | 4d | 2027-01-13 | 2027-01-16 | 197 | 0d | We | 32h | SC-09-02-06 |
| 199 | 20.7 | Expertise - Deployment | 4d | 2027-01-18 | 2027-01-21 | 198 | 0d | We | 32h | SC-09-02-07 |
| 200 | 21 | **Radiologi Workspace Local Inventory (SC-09-03)** | 19d | 2027-01-22 | 2027-02-12 |  | 0d | We | 304h |  |
| 201 | 21.1 | StokOpname - Core Feature | 2d | 2027-01-22 | 2027-01-23 | 199, 179 | 0d | We | 16h | SC-09-03-01a |
| 202 | 21.2 | ReqMutasi - Core Feature | 2d | 2027-01-25 | 2027-01-26 | 201 | 0d | We | 16h | SC-09-03-01b |
| 203 | 21.3 | TerimaMutasi - Core Feature | 2d | 2027-01-27 | 2027-01-28 | 202 | 0d | We | 16h | SC-09-03-01c |
| 204 | 21.4 | Inventory Rad - UI Design | 2d | 2027-01-29 | 2027-01-30 | 203 | 0d | We | 16h | SC-09-03-02 |
| 205 | 21.5 | Inventory Rad - BFF Feature | 1d | 2027-02-01 | 2027-02-01 | 204 | 0d | We | 8h | SC-09-03-03 |
| 206 | 21.6 | Inventory Rad - Architecture | 1d | 2027-02-02 | 2027-02-02 | 205 | 0d | We | 8h | SC-09-03-04 |
| 207 | 21.7 | Inventory Rad - Development | 1d | 2027-02-03 | 2027-02-03 | 206 | 0d | We | 8h | SC-09-03-05 |
| 208 | 21.8 | Inventory Rad - Testing | 4d | 2027-02-04 | 2027-02-08 | 207 | 0d | We | 32h | SC-09-03-06 |
| 209 | 21.9 | Inventory Rad - Deployment | 4d | 2027-02-09 | 2027-02-12 | 208 | 0d | We | 32h | SC-09-03-07 |

| ID | WBS | Task | Type | Duration | Start | Finish | Predecessors | Total slack | Free slack | Resources | Work | Text1 |
| --- | --- | --- | --- | --- | --- | --- | --- | --- | --- | --- | --- | --- |
| 210 | 22 | **Kamar Operasi Workspace Scheduling (SC-10-01)** |  | 24d | 2026-10-12 | 2026-11-07 |  | 0d |  | Arie | 384h |  |
| 211 | 22.1 | OrderOk - Core Feature | manual | 5d | 2026-10-12 | 2026-10-16 |  |  |  | Arie | 40h | SC-10-01-01a |
| 212 | 22.2 | JadwalOk - Core Feature |  | 5d | 2026-10-17 | 2026-10-22 | 211 | 38d | 0d | Arie | 40h | SC-10-01-01b |
| 213 | 22.3 | Schedule OK - UI Design |  | 3d | 2026-10-23 | 2026-10-26 | 212 | 38d | 0d | Arie | 24h | SC-10-01-02 |
| 214 | 22.4 | Schedule OK - BFF Feature |  | 1d | 2026-10-27 | 2026-10-27 | 213 | 38d | 0d | Arie | 8h | SC-10-01-03 |
| 215 | 22.5 | Schedule OK - Architecture |  | 1d | 2026-10-28 | 2026-10-28 | 214 | 38d | 0d | Arie | 8h | SC-10-01-04 |
| 216 | 22.6 | Schedule OK - Development |  | 1d | 2026-10-29 | 2026-10-29 | 215 | 38d | 0d | Arie | 8h | SC-10-01-05 |
| 217 | 22.7 | Schedule OK - Testing |  | 4d | 2026-10-30 | 2026-11-03 | 216 | 38d | 0d | Arie | 32h | SC-10-01-06 |
| 218 | 22.8 | Schedule OK - Deployment |  | 4d | 2026-11-04 | 2026-11-07 | 217 | 38d | 0d | Arie | 32h | SC-10-01-07 |
| 219 | 23 | **Kamar Operasi Workspace Operative Management (SC-10-02)** |  | 26d | 2026-11-09 | 2026-12-08 |  | 38d |  | Arie | 416h |  |
| 220 | 23.1 | JadwalOk - Core Feature |  | 4d | 2026-11-09 | 2026-11-12 | 218 | 38d | 0d | Arie | 32h | SC-10-02-01a |
| 221 | 23.2 | PreOperativeClearance - Core Feature |  | 4d | 2026-11-13 | 2026-11-17 | 220 | 38d | 0d | Arie | 32h | SC-10-02-01b |
| 222 | 23.3 | PakaiBrg - Core Feature |  | 2d | 2026-11-18 | 2026-11-19 | 221 | 38d | 0d | Arie | 16h | SC-10-02-01c |
| 223 | 23.4 | Tindakan - Core Feature |  | 2d | 2026-11-20 | 2026-11-21 | 222 | 38d | 0d | Arie | 16h | SC-10-02-01d |
| 224 | 23.5 | Operative OK - UI Design |  | 3d | 2026-11-23 | 2026-11-25 | 223 | 38d | 0d | Arie | 24h | SC-10-02-02 |
| 225 | 23.6 | Operative OK - BFF Feature |  | 1d | 2026-11-26 | 2026-11-26 | 224 | 38d | 0d | Arie | 8h | SC-10-02-03 |
| 226 | 23.7 | Operative OK - Architecture |  | 1d | 2026-11-27 | 2026-11-27 | 225 | 38d | 0d | Arie | 8h | SC-10-02-04 |
| 227 | 23.8 | Operative OK - Development |  | 1d | 2026-11-28 | 2026-11-28 | 226 | 38d | 0d | Arie | 8h | SC-10-02-05 |
| 228 | 23.9 | Operative OK - Testing |  | 4d | 2026-11-30 | 2026-12-03 | 227 | 38d | 0d | Arie | 32h | SC-10-02-06 |
| 229 | 23.10 | Operative OK - Deployment |  | 4d | 2026-12-04 | 2026-12-08 | 228 | 38d | 29d | Arie | 32h | SC-10-02-07 |
| 230 | 24 | **Kamar Operasi Workspace Local Inventory (SC-10-03)** |  | 19d | 2027-01-12 | 2027-02-02 |  | 9d |  | Arie | 304h |  |
| 231 | 24.1 | StokOpname - Core Feature |  | 2d | 2027-01-12 | 2027-01-13 | 229, 179 | 9d | 0d | Arie | 16h | SC-10-03-01a |
| 232 | 24.2 | ReqMutasi - Core Feature |  | 2d | 2027-01-14 | 2027-01-15 | 231 | 9d | 0d | Arie | 16h | SC-10-03-01b |
| 233 | 24.3 | TerimaMutasi - Core Feature |  | 2d | 2027-01-16 | 2027-01-18 | 232 | 9d | 0d | Arie | 16h | SC-10-03-01c |
| 234 | 24.4 | Inventory OK - UI Design |  | 2d | 2027-01-19 | 2027-01-20 | 233 | 9d | 0d | Arie | 16h | SC-10-03-02 |
| 235 | 24.5 | Inventory OK - BFF Feature |  | 1d | 2027-01-21 | 2027-01-21 | 234 | 9d | 0d | Arie | 8h | SC-10-03-03 |
| 236 | 24.6 | Inventory OK - Architecture |  | 1d | 2027-01-22 | 2027-01-22 | 235 | 9d | 0d | Arie | 8h | SC-10-03-04 |
| 237 | 24.7 | Inventory OK - Development |  | 1d | 2027-01-23 | 2027-01-23 | 236 | 9d | 0d | Arie | 8h | SC-10-03-05 |
| 238 | 24.8 | Inventory OK - Testing |  | 4d | 2027-01-25 | 2027-01-28 | 237 | 9d | 0d | Arie | 32h | SC-10-03-06 |
| 239 | 24.9 | Inventory OK - Deployment |  | 4d | 2027-01-29 | 2027-02-02 | 238 | 9d |  | Arie | 32h | SC-10-03-07 |

| ID | WBS | Task | Type | Duration | Start | Finish | Predecessors | Total slack | Free slack | Resources | Work | Text1 |
| --- | --- | --- | --- | --- | --- | --- | --- | --- | --- | --- | --- | --- |
| 240 | 25 | **Apotek Workspace Antrian Apotek (SC-11-01)** |  | 27d | 2026-10-12 | 2026-11-11 |  | 0d |  | Jude | 432h |  |
| 241 | 25.1 | AntrianApotek - Core Feature | manual | 3d | 2026-10-12 | 2026-10-14 |  |  |  | Jude | 24h | SC-11-01-01a |
| 242 | 25.2 | Penjualan - Core Feature |  | 3d | 2026-10-15 | 2026-10-17 | 241 | 10d | 0d | Jude | 24h | SC-11-01-01b |
| 243 | 25.3 | TelaahResep - Core Feature |  | 2d | 2026-10-19 | 2026-10-20 | 242 | 10d | 0d | Jude | 16h | SC-11-01-01c |
| 244 | 25.4 | OrderDispensing - Core Feature |  | 3d | 2026-10-21 | 2026-10-23 | 243 | 10d | 0d | Jude | 24h | SC-11-01-01d |
| 245 | 25.5 | Billing - Core Feature |  | 2d | 2026-10-24 | 2026-10-26 | 244 | 10d | 0d | Jude | 16h | SC-11-01-01e |
| 246 | 25.6 | Antrian Apotek - UI Design |  | 3d | 2026-10-27 | 2026-10-29 | 245 | 6d | 0d | Jude | 24h | SC-11-01-02 |
| 247 | 25.7 | Antrian Apotek - BFF Feature |  | 1d | 2026-10-30 | 2026-10-30 | 246 | 6d | 0d | Jude | 8h | SC-11-01-03 |
| 248 | 25.8 | Antrian Apotek - Architecture |  | 1d | 2026-10-31 | 2026-10-31 | 247 | 6d | 0d | Jude | 8h | SC-11-01-04 |
| 249 | 25.9 | Antrian Apotek - Development |  | 1d | 2026-11-02 | 2026-11-02 | 248 | 6d | 0d | Jude | 8h | SC-11-01-05 |
| 250 | 25.10 | Antrian Apotek - Testing |  | 4d | 2026-11-03 | 2026-11-06 | 249 | 6d | 0d | Jude | 32h | SC-11-01-06 |
| 251 | 25.11 | Antrian Apotek - Deployment |  | 4d | 2026-11-07 | 2026-11-11 | 250 | 6d | 0d | Jude | 32h | SC-11-01-07 |
| 252 | 26 | **Apotek Workspace Telaah Resep (SC-11-02)** |  | 17d | 2026-11-12 | 2026-12-01 |  | 6d |  | Jude | 272h |  |
| 253 | 26.1 | TelaahResep - Core Feature |  | 3d | 2026-11-12 | 2026-11-14 | 251 | 6d | 0d | Jude | 24h | SC-11-02-01a |
| 254 | 26.2 | Telaah Resep - UI Design |  | 3d | 2026-11-16 | 2026-11-18 | 253 | 6d | 0d | Jude | 24h | SC-11-02-02 |
| 255 | 26.3 | Telaah Resep - BFF Feature |  | 1d | 2026-11-19 | 2026-11-19 | 254 | 6d | 0d | Jude | 8h | SC-11-02-03 |
| 256 | 26.4 | Telaah Resep - Architecture |  | 1d | 2026-11-20 | 2026-11-20 | 255 | 6d | 0d | Jude | 8h | SC-11-02-04 |
| 257 | 26.5 | Telaah Resep - Development |  | 1d | 2026-11-21 | 2026-11-21 | 256 | 6d | 0d | Jude | 8h | SC-11-02-05 |
| 258 | 26.6 | Telaah Resep - Testing |  | 4d | 2026-11-23 | 2026-11-26 | 257 | 6d | 0d | Jude | 32h | SC-11-02-06 |
| 259 | 26.7 | Telaah Resep - Deployment |  | 4d | 2026-11-27 | 2026-12-01 | 258 | 6d | 0d | Jude | 32h | SC-11-02-07 |
| 260 | 27 | **Apotek Workspace Dispensing (SC-11-03)** |  | 20d | 2026-12-02 | 2026-12-24 |  | 6d |  | Jude | 320h |  |
| 261 | 27.1 | OrderDispensing - Core Feature |  | 2d | 2026-12-02 | 2026-12-03 | 259 | 6d | 0d | Jude | 16h | SC-11-03-01a |
| 262 | 27.2 | AntrianApotek - Core Feature |  | 1d | 2026-12-04 | 2026-12-04 | 261 | 6d | 0d | Jude | 8h | SC-11-03-01b |
| 263 | 27.3 | Stok - Core Feature |  | 3d | 2026-12-05 | 2026-12-08 | 262 | 6d | 0d | Jude | 24h | SC-11-03-01c |
| 264 | 27.4 | Dispensing - UI Design |  | 3d | 2026-12-09 | 2026-12-11 | 263 | 6d | 0d | Jude | 24h | SC-11-03-02 |
| 265 | 27.5 | Dispensing - BFF Feature |  | 1d | 2026-12-12 | 2026-12-12 | 264 | 6d | 0d | Jude | 8h | SC-11-03-03 |
| 266 | 27.6 | Dispensing - Architecture |  | 1d | 2026-12-14 | 2026-12-14 | 265 | 6d | 0d | Jude | 8h | SC-11-03-04 |
| 267 | 27.7 | Dispensing - Development |  | 1d | 2026-12-15 | 2026-12-15 | 266 | 6d | 0d | Jude | 8h | SC-11-03-05 |
| 268 | 27.8 | Dispensing - Testing |  | 4d | 2026-12-16 | 2026-12-19 | 267 | 6d | 0d | Jude | 32h | SC-11-03-06 |
| 269 | 27.9 | Dispensing - Deployment |  | 4d | 2026-12-21 | 2026-12-24 | 268 | 6d | 0d | Jude | 32h | SC-11-03-07 |

| ID | WBS | Task | Type | Duration | Start | Finish | Predecessors | Total slack | Free slack | Resources | Work | Text1 |
| --- | --- | --- | --- | --- | --- | --- | --- | --- | --- | --- | --- | --- |
| 270 | 28 | **Apotek Workspace Serah Obat (SC-11-04)** |  | 18d | 2026-12-25 | 2027-01-14 |  | 6d |  | Jude | 288h |  |
| 271 | 28.1 | AntrianApotek - Core Feature |  | 2d | 2026-12-25 | 2026-12-26 | 269 | 6d | 0d | Jude | 16h | SC-11-04-01a |
| 272 | 28.2 | Stok - Core Feature |  | 2d | 2026-12-28 | 2026-12-29 | 271 | 6d | 0d | Jude | 16h | SC-11-04-01b |
| 273 | 28.3 | Serah Obat - UI Design |  | 3d | 2026-12-30 | 2027-01-01 | 272 | 6d | 0d | Jude | 24h | SC-11-04-02 |
| 274 | 28.4 | Serah Obat - BFF Feature |  | 1d | 2027-01-02 | 2027-01-02 | 273 | 6d | 0d | Jude | 8h | SC-11-04-03 |
| 275 | 28.5 | Serah Obat - Architecture |  | 1d | 2027-01-04 | 2027-01-04 | 274 | 6d | 0d | Jude | 8h | SC-11-04-04 |
| 276 | 28.6 | Serah Obat - Development |  | 1d | 2027-01-05 | 2027-01-05 | 275 | 6d | 0d | Jude | 8h | SC-11-04-05 |
| 277 | 28.7 | Serah Obat - Testing |  | 4d | 2027-01-06 | 2027-01-09 | 276 | 6d | 0d | Jude | 32h | SC-11-04-06 |
| 278 | 28.8 | Serah Obat - Deployment |  | 4d | 2027-01-11 | 2027-01-14 | 277 | 6d | 0d | Jude | 32h | SC-11-04-07 |
| 279 | 29 | **Apotek Workspace Local Inventory (SC-11-05)** |  | 19d | 2027-01-15 | 2027-02-05 |  | 6d |  | Jude | 304h |  |
| 280 | 29.1 | StokOpname - Core Feature |  | 2d | 2027-01-15 | 2027-01-16 | 278, 179 | 6d | 0d | Jude | 16h | SC-11-05-01a |
| 281 | 29.2 | ReqMutasi - Core Feature |  | 2d | 2027-01-18 | 2027-01-19 | 280 | 6d | 0d | Jude | 16h | SC-11-05-01b |
| 282 | 29.3 | TerimaMutasi - Core Feature |  | 2d | 2027-01-20 | 2027-01-21 | 281 | 6d | 0d | Jude | 16h | SC-11-05-01c |
| 283 | 29.4 | Inventory Apotek - UI Design |  | 2d | 2027-01-22 | 2027-01-23 | 282 | 6d | 0d | Jude | 16h | SC-11-05-02 |
| 284 | 29.5 | Inventory Apotek - BFF Feature |  | 1d | 2027-01-25 | 2027-01-25 | 283 | 6d | 0d | Jude | 8h | SC-11-05-03 |
| 285 | 29.6 | Inventory Apotek - Architecture |  | 1d | 2027-01-26 | 2027-01-26 | 284 | 6d | 0d | Jude | 8h | SC-11-05-04 |
| 286 | 29.7 | Inventory Apotek - Development |  | 1d | 2027-01-27 | 2027-01-27 | 285 | 6d | 0d | Jude | 8h | SC-11-05-05 |
| 287 | 29.8 | Inventory Apotek - Testing |  | 4d | 2027-01-28 | 2027-02-01 | 286 | 6d | 0d | Jude | 32h | SC-11-05-06 |
| 288 | 29.9 | Inventory Apotek - Deployment |  | 4d | 2027-02-02 | 2027-02-05 | 287 | 6d |  | Jude | 32h | SC-11-05-07 |
| 289 | 30 | **Gudang Workspace Terima Barang (DO) (SC-12-01)** |  | 26d | 2026-10-12 | 2026-11-10 |  | 0d |  | Roso | 416h |  |
| 290 | 30.1 | TerimaBrg - Core Feature | manual | 4d | 2026-10-12 | 2026-10-15 |  |  |  | Roso | 32h | SC-12-01-01a |
| 291 | 30.2 | Stok - Core Feature |  | 4d | 2026-10-16 | 2026-10-20 | 290 | 38d | 0d | Roso | 32h | SC-12-01-01b |
| 292 | 30.3 | PurchaseOrder - Core Feature |  | 4d | 2026-10-21 | 2026-10-24 | 291 | 38d | 0d | Roso | 32h | SC-12-01-01c |
| 293 | 30.4 | DO Gudang - UI Design |  | 3d | 2026-10-26 | 2026-10-28 | 292 | 38d | 0d | Roso | 24h | SC-12-01-02 |
| 294 | 30.5 | DO Gudang - BFF Feature |  | 1d | 2026-10-29 | 2026-10-29 | 293 | 38d | 0d | Roso | 8h | SC-12-01-03 |
| 295 | 30.6 | DO Gudang - Architecture |  | 1d | 2026-10-30 | 2026-10-30 | 294 | 38d | 0d | Roso | 8h | SC-12-01-04 |
| 296 | 30.7 | DO Gudang - Development |  | 1d | 2026-10-31 | 2026-10-31 | 295 | 38d | 0d | Roso | 8h | SC-12-01-05 |
| 297 | 30.8 | DO Gudang - Testing |  | 4d | 2026-11-02 | 2026-11-05 | 296 | 38d | 0d | Roso | 32h | SC-12-01-06 |
| 298 | 30.9 | DO Gudang - Deployment |  | 4d | 2026-11-06 | 2026-11-10 | 297 | 38d | 0d | Roso | 32h | SC-12-01-07 |

| ID | WBS | Task | Duration | Start | Finish | Predecessors | Total slack | Free slack | Resources | Work | Text1 |
| --- | --- | --- | --- | --- | --- | --- | --- | --- | --- | --- | --- |
| 299 | 31 | **Gudang Workspace Local Inventory (SC-12-02)** | 24d | 2026-11-11 | 2026-12-08 |  | 38d |  | Roso | 384h |  |
| 300 | 31.1 | Stok - Core Feature | 4d | 2026-11-11 | 2026-11-14 | 298 | 38d | 0d | Roso | 32h | SC-12-02-01a |
| 301 | 31.2 | StokOpname - Core Feature | 3d | 2026-11-16 | 2026-11-18 | 300 | 38d | 0d | Roso | 24h | SC-12-02-01b |
| 302 | 31.3 | Mutasi - Core Feature | 3d | 2026-11-19 | 2026-11-21 | 301 | 38d | 0d | Roso | 24h | SC-12-02-01c |
| 303 | 31.4 | Inventory Gudang - UI Design | 3d | 2026-11-23 | 2026-11-25 | 302 | 38d | 0d | Roso | 24h | SC-12-02-02 |
| 304 | 31.5 | Inventory Gudang - BFF Feature | 1d | 2026-11-26 | 2026-11-26 | 303 | 38d | 0d | Roso | 8h | SC-12-02-03 |
| 305 | 31.6 | Inventory Gudang - Architecture | 1d | 2026-11-27 | 2026-11-27 | 304 | 38d | 0d | Roso | 8h | SC-12-02-04 |
| 306 | 31.7 | Inventory Gudang - Development | 1d | 2026-11-28 | 2026-11-28 | 305 | 38d | 0d | Roso | 8h | SC-12-02-05 |
| 307 | 31.8 | Inventory Gudang - Testing | 4d | 2026-11-30 | 2026-12-03 | 306 | 38d | 0d | Roso | 32h | SC-12-02-06 |
| 308 | 31.9 | Inventory Gudang - Deployment | 4d | 2026-12-04 | 2026-12-08 | 307 | 38d | 0d | Roso | 32h | SC-12-02-07 |
| 309 | 32 | **Gudang Workspace Retur Beli (SC-12-03)** | 19d | 2026-12-09 | 2026-12-30 |  | 38d |  | Roso | 304h |  |
| 310 | 32.1 | ReturBeli - Core Feature | 3d | 2026-12-09 | 2026-12-11 | 308 | 38d | 0d | Roso | 24h | SC-12-03-01a |
| 311 | 32.2 | Stok - Core Feature | 2d | 2026-12-12 | 2026-12-14 | 310 | 38d | 0d | Roso | 16h | SC-12-03-01b |
| 312 | 32.3 | Retur Beli - UI Design | 3d | 2026-12-15 | 2026-12-17 | 311 | 38d | 0d | Roso | 24h | SC-12-03-02 |
| 313 | 32.4 | Retur Beli - BFF Feature | 1d | 2026-12-18 | 2026-12-18 | 312 | 38d | 0d | Roso | 8h | SC-12-03-03 |
| 314 | 32.5 | Retur Beli - Architecture | 1d | 2026-12-19 | 2026-12-19 | 313 | 38d | 0d | Roso | 8h | SC-12-03-04 |
| 315 | 32.6 | Retur Beli - Development | 1d | 2026-12-21 | 2026-12-21 | 314 | 38d | 0d | Roso | 8h | SC-12-03-05 |
| 316 | 32.7 | Retur Beli - Testing | 4d | 2026-12-22 | 2026-12-25 | 315 | 38d | 0d | Roso | 32h | SC-12-03-06 |
| 317 | 32.8 | Retur Beli - Deployment | 4d | 2026-12-26 | 2026-12-30 | 316 | 38d |  | Roso | 32h | SC-12-06-07 |
| 318 | 33 | **Purchasing Workspace Purchase Order (SC-13-01)** | 33d | 2026-12-03 | 2027-01-09 |  | 8d |  | Fikri | 528h |  |
| 319 | 33.1 | MaterialReq - Core Feature | 5d | 2026-12-03 | 2026-12-08 | 54 | 8d | 0d | Fikri | 40h | SC-13-01-01a |
| 320 | 33.2 | PurchaseReq - Core Feature | 4d | 2026-12-09 | 2026-12-12 | 319 | 8d | 0d | Fikri | 32h | SC-13-01-01b |
| 321 | 33.3 | Forecasting - Core Feature | 5d | 2026-12-14 | 2026-12-18 | 320 | 8d | 0d | Fikri | 40h | SC-13-01-01c |
| 322 | 33.4 | PurchaseOrder - Core Feature | 4d | 2026-12-19 | 2026-12-23 | 321 | 8d | 0d | Fikri | 32h | SC-13-01-01d |
| 323 | 33.5 | Purchasing - UI Design | 4d | 2026-12-24 | 2026-12-28 | 322 | 8d | 0d | Fikri | 32h | SC-13-01-02 |
| 324 | 33.6 | Purchasing - BFF Feature | 1d | 2026-12-29 | 2026-12-29 | 323 | 8d | 0d | Fikri | 8h | SC-13-01-03 |
| 325 | 33.7 | Purchasing - Architecture | 1d | 2026-12-30 | 2026-12-30 | 324 | 8d | 0d | Fikri | 8h | SC-13-01-04 |
| 326 | 33.8 | Purchasing - Development | 1d | 2026-12-31 | 2026-12-31 | 325 | 8d | 0d | Fikri | 8h | SC-13-01-05 |
| 327 | 33.9 | Purchasing - Testing | 4d | 2027-01-01 | 2027-01-05 | 326 | 8d | 0d | Fikri | 32h | SC-13-01-06 |
| 328 | 33.10 | Purchasing - Deployment | 4d | 2027-01-06 | 2027-01-09 | 327 | 8d | 0d | Fikri | 32h | SC-13-01-07 |

| ID | WBS | Task | Duration | Start | Finish | Predecessors | Total slack | Free slack | Resources | Work | Text1 |
| --- | --- | --- | --- | --- | --- | --- | --- | --- | --- | --- | --- |
| 329 | 34 | **Purchasing Workspace Faktur Tagihan (SC-13-02)** | 21d | 2027-01-11 | 2027-02-03 |  | 8d |  | Fikri | 336h |  |
| 330 | 34.1 | Faktur - Core Feature | 4d | 2027-01-11 | 2027-01-14 | 328 | 8d | 0d | Fikri | 32h | SC-13-02-01a |
| 331 | 34.2 | PurchaseOrder - Core Feature | 3d | 2027-01-15 | 2027-01-18 | 330 | 8d | 0d | Fikri | 24h | SC-13-02-01b |
| 332 | 34.3 | Faktur - UI Design | 3d | 2027-01-19 | 2027-01-21 | 331 | 8d | 0d | Fikri | 24h | SC-13-02-02 |
| 333 | 34.4 | Faktur - BFF Feature | 1d | 2027-01-22 | 2027-01-22 | 332 | 8d | 0d | Fikri | 8h | SC-13-02-03 |
| 334 | 34.5 | Faktur - Architecture | 1d | 2027-01-23 | 2027-01-23 | 333 | 8d | 0d | Fikri | 8h | SC-13-02-04 |
| 335 | 34.6 | Faktur - Development | 1d | 2027-01-25 | 2027-01-25 | 334 | 8d | 0d | Fikri | 8h | SC-13-02-05 |
| 336 | 34.7 | Faktur - Testing | 4d | 2027-01-26 | 2027-01-29 | 335 | 8d | 0d | Fikri | 32h | SC-13-02-06 |
| 337 | 34.8 | Faktur - Deployment | 4d | 2027-01-30 | 2027-02-03 | 336 | 8d |  | Fikri | 32h | SC-13-02-07 |
